# 防火墙替换项目整体周期

Schedule from a web Gantt chart, 2025-08-11 to 2025-08-25.
Saturdays and Sundays are off

## Schedule

| ID | WBS | Task | Duration | Start | Finish | Predecessors | Status |
| --- | --- | --- | --- | --- | --- | --- | --- |
| 2 | 1 | **调研阶段** | 1d | 2025-08-11 | 2025-08-11 |  |  |
| 3 | 1.1 | 调研工作启动会 | 1d | 2025-08-11 | 2025-08-11 |  |  |
| 4 | 1.2 | IDC网络环境调研 | 1d | 2025-08-11 | 2025-08-11 |  |  |
| 5 | 1.3 | 工厂网络环境调研 | 1d | 2025-08-11 | 2025-08-11 |  |  |
| 6 | 1.4 | 调研资料整理 | 1d | 2025-08-11 | 2025-08-11 |  |  |
| 7 | 1.5 | 调研工作确认会 | 1d | 2025-08-11 | 2025-08-11 |  |  |
| 8 | 2 | **方案设计阶段** | 11d | 2025-08-11 | 2025-08-25 |  |  |
| 9 | 2.1 | 方案设计工作启动会 | 1d | 2025-08-25 | 2025-08-25 |  |  |
| 10 | 2.2 | 安全策略标准制定 | 1d | 2025-08-12 | 2025-08-12 | 2 | waiting |
| 11 | 2.3 | IDC防火墙网络优化设计 | 1d | 2025-08-11 | 2025-08-11 |  |  |
| 12 | 2.4 | IDC安全策略优化设计 | 1d | 2025-08-11 | 2025-08-11 |  |  |
| 13 | 2.5 | 工厂/办公室防火墙安全策略优化设计 | 1d | 2025-08-11 | 2025-08-11 |  |  |
| 14 | 2.6 | 方案设计工作确认会 | 1d | 2025-08-11 | 2025-08-11 |  |  |
| 15 | 3 | **项目设计阶段** | 1d | 2025-08-11 | 2025-08-11 |  |  |
| 16 | 3.1 | 项目设计启动会 | 1d | 2025-08-11 | 2025-08-11 |  |  |
| 17 | 3.2 | SDC上海防火墙clish脚本配置设计与测试 | 1d | 2025-08-11 | 2025-08-11 |  |  |
| 18 | 3.3 | CHC上海来福士中心防火墙脚本配置设计与测试 | 1d | 2025-08-11 | 2025-08-11 |  |  |
| 19 | 3.4 | ABAC上海前滩办公室防火墙脚本配置设计与测试 | 1d | 2025-08-11 | 2025-08-11 |  |  |
